Schedule from MS Project, 2016-10-10 to 2016-12-23, A marks actual dates.
owntt

## Calendars

- 标准: Mon-Fri 08:00-12:00, 13:00-17:00; Sat-Sun off.

## Resources

| Resource |
| --- |
| 易丹 |
| 周春 |
| 刘国 |
| 李子恒 |
| 刘超 |
| 刘静 |
| 李海华 |
| 陈果 |
| 黄根 |
| 文伟 |
| 张江锋 |

## Schedule

| ID | WBS | Task | Type | Duration | Start | Finish | Complete | Remaining | Total slack | Resources | Work | Actual work |
| --- | --- | --- | --- | --- | --- | --- | --- | --- | --- | --- | --- | --- |
| 1 | 1 | **项目搭建** |  | 2d | 2016-10-11 A | 2016-10-12 | 33% | 1.33d | 0d |  | 24h | 8h |
| 2 | 1.1 | 后台基础框架 | manual | 1d | 2016-10-11 A | 2016-10-11 A | 100% |  |  | 周春 | 8h | 8h |
| 3 | 1.2 | ios项目搭建 | manual | 1d | 2016-10-12 | 2016-10-12 |  |  |  | 李子恒 | 8h |  |
| 4 | 1.3 | android项目搭建 | manual | 1d | 2016-10-12 | 2016-10-12 |  |  |  | 刘国 | 8h |  |
| 5 | 2 | **登录** |  | 2d | 2016-10-12 A | 2016-10-13 | 25% | 1.5d | 0d |  | 32h | 8h |
| 6 | 2.1 | 登录页面设计 | manual | 1d | 2016-10-12 A | 2016-10-12 A | 100% |  |  | 易丹 | 8h | 8h |
| 7 | 2.2 | 后台登陆 | manual | 1d | 2016-10-13 | 2016-10-13 |  |  |  | 周春 | 8h |  |
| 8 | 2.3 | android登录 | manual | 1d | 2016-10-13 | 2016-10-13 |  |  |  | 刘国 | 8h |  |
| 9 | 2.4 | iod登录 | manual | 1d | 2016-10-13 | 2016-10-13 |  |  |  | 李子恒 | 8h |  |
| 10 | 3 | **首页** |  | 3d | 2016-10-13 | 2016-10-17 |  |  | 0d |  | 48h |  |
| 11 | 3.1 | 首页设计 | manual | 1d | 2016-10-13 | 2016-10-13 |  |  |  | 易丹 | 8h |  |
| 12 | 3.2 | 后台首页 | manual | 1d | 2016-10-14 | 2016-10-14 |  |  |  | 周春 | 8h |  |
| 13 | 3.3 | android首页 | manual | 2d | 2016-10-14 | 2016-10-17 |  |  |  | 刘国 | 16h |  |
| 14 | 3.4 | ios首页 | manual | 2d | 2016-10-14 | 2016-10-17 |  |  |  | 李子恒 | 16h |  |
| 15 | 4 | **通用组件** |  | 6d | 2016-10-12 A | 2016-10-19 | 17% | 5d | 0d |  | 48h | 8h |
| 16 | 4.1 | **app选人组件** |  | 6d | 2016-10-12 A | 2016-10-19 | 17% | 5d | 0d |  | 48h | 8h |
| 17 | 4.1.1 | 数据接口 | manual | 2d | 2016-10-12 A | 2016-10-13 | 50% | 1d |  | 陈果 | 16h | 8h |
| 18 | 4.1.2 | ios选人组件 | manual | 2d | 2016-10-18 | 2016-10-19 |  |  |  | 李子恒 | 16h |  |
| 19 | 4.1.3 | android选人组件 | manual | 2d | 2016-10-18 | 2016-10-19 |  |  |  | 刘国 | 16h |  |
| 20 | 5 | **应用** |  | 46d | 2016-10-11 A | 2016-12-13 | 3% | 44.84d | 8d |  | 1304h | 24h |
| 21 | 5.1 | **团队管理** |  | 38d | 2016-10-11 A | 2016-12-01 | 6% | 35.83d | 0d |  | 392h | 16h |
| 22 | 5.1.1 | 需求分析 | manual | 1d | 2016-10-11 A | 2016-10-11 A | 100% |  |  | 刘超 | 8h | 8h |
| 23 | 5.1.2 | 数据库设计 | manual | 1d | 2016-10-12 A | 2016-10-12 A | 100% |  |  | 刘超 | 8h | 8h |
| 24 | 5.1.3 | 团队列表 | manual | 2d | 2016-10-13 | 2016-10-14 |  |  |  | 刘超 | 16h |  |
| 25 | 5.1.4 | 团队列表 | manual | 2d | 2016-10-20 | 2016-10-21 |  |  |  | 李子恒; 刘国 | 32h |  |
| 26 | 5.1.5 | 团队申请 | manual | 2d | 2016-10-17 | 2016-10-18 |  |  |  | 刘超 | 16h |  |
| 27 | 5.1.6 | 团队申请 | manual | 1d | 2016-10-24 | 2016-10-24 |  |  |  | 李子恒; 刘国 | 16h |  |
| 28 | 5.1.7 | 申请审核 | manual | 1d | 2016-10-12 | 2016-10-12 |  |  |  | 张江锋 | 8h |  |
| 29 | 5.1.8 | 申请审核 | manual | 2d | 2016-10-19 | 2016-10-20 |  |  |  | 刘超 | 16h |  |

Notes:
- 2: 后台框架搭建
- 3: ios项目搭建
- 4: android项目搭建
- 6: 后台及app登录页面设计
- 7: 后台登陆页面修改及登录接口
- 8: 登录功能实现
- 9: 登录功能实现
- 11: 后台首页设计，app参考高保真
- 12: 后台首页页面修改
- 13: app首页
- 14: app首页
- 17: 跟通讯录接口类似
- 18: 选人组件
- 19: 选人组件
- 22: 把需求了解清楚
- 23: 根据需求设计数据库
- 24: 团队列表接口，支持分页
- 25: 参考原型
- 26: 团队申请接口
- 27: 参考原型
- 28: 前端页面
- 29: 根据前端提供页面完成该功能

| ID | WBS | Task | Type | Duration | Start | Finish | Complete | Remaining | Total slack | Constraint | Resources | Work | Actual work |
| --- | --- | --- | --- | --- | --- | --- | --- | --- | --- | --- | --- | --- | --- |
| 30 | 5.1.9 | **团队详情** |  | 37d | 2016-10-12 | 2016-12-01 |  |  | 0d |  |  | 272h |  |
| 31 | 5.1.9.1 | 团队详情 | manual | 1d | 2016-10-12 | 2016-10-12 |  |  |  |  | 张江锋 | 8h |  |
| 32 | 5.1.9.2 | 针对团队成员 | manual | 1d | 2016-10-21 | 2016-10-21 |  |  |  |  | 刘超 | 8h |  |
| 33 | 5.1.9.3 | **针对团队负责人** |  | 29d | 2016-10-24 | 2016-12-01 |  |  | 0d |  |  | 256h |  |
| 34 | 5.1.9.3.1 | 团队详情 | manual | 2d | 2016-10-24 | 2016-10-25 |  |  |  |  | 刘超 | 16h |  |
| 35 | 5.1.9.3.2 | 团队详情 | manual | 2d | 2016-10-25 | 2016-10-26 |  |  |  |  | 李子恒; 刘国 | 32h |  |
| 36 | 5.1.9.3.3 | 添加删除成员 | manual | 2d | 2016-10-24 | 2016-10-25 |  |  |  |  | 刘超 | 16h |  |
| 37 | 5.1.9.3.4 | 全部成员 | manual | 1d | 2016-10-26 | 2016-10-26 |  |  |  |  | 刘超 | 8h |  |
| 38 | 5.1.9.3.5 | 全部成员 | manual | 1d | 2016-10-27 | 2016-10-27 |  |  |  |  | 李子恒; 刘国 | 16h |  |
| 39 | 5.1.9.3.6 | 添加成员 | manual | 1d | 2016-10-28 | 2016-10-28 |  |  |  |  | 李子恒; 刘国 | 16h |  |
| 40 | 5.1.9.3.7 | 删除成员 | manual | 1d | 2016-10-31 | 2016-10-31 |  |  |  |  | 李子恒; 刘国 | 16h |  |
| 41 | 5.1.9.3.8 | 团队头像 | manual | 1d | 2016-10-27 | 2016-10-27 |  |  |  |  | 刘超 | 8h |  |
| 42 | 5.1.9.3.9 | 团队头像 | manual | 1d | 2016-11-01 | 2016-11-01 |  |  |  |  | 李子恒; 刘国 | 16h |  |
| 43 | 5.1.9.3.10 | 团队名称 | manual | 1d | 2016-10-28 | 2016-10-28 |  |  |  |  | 刘超 | 8h |  |
| 44 | 5.1.9.3.11 | 团队名称 | manual | 1d | 2016-11-02 | 2016-11-02 |  |  |  |  | 李子恒; 刘国 | 16h |  |
| 45 | 5.1.9.3.12 | 外部成员管理 | manual | 1d | 2016-10-31 | 2016-10-31 |  |  |  |  | 刘超 | 8h |  |
| 46 | 5.1.9.3.13 | 外部成员管理 | manual | 2d | 2016-11-03 | 2016-11-04 |  |  |  |  | 李子恒; 刘国 | 32h |  |
| 47 | 5.1.9.3.14 | 转让团队 | manual | 1d | 2016-12-01 | 2016-12-01 |  |  |  |  | 刘超 | 8h |  |
| 48 | 5.1.9.3.15 | 转让团队 | manual | 1d | 2016-11-07 | 2016-11-07 |  |  |  |  | 李子恒; 刘国 | 16h |  |
| 49 | 5.1.9.3.16 | 解散团队 | manual | 1d | 2016-11-02 | 2016-11-02 |  |  |  |  | 刘超 | 8h |  |
| 50 | 5.1.9.3.17 | 解散团队 | manual | 1d | 2016-11-08 | 2016-11-08 |  |  |  |  | 李子恒; 刘国 | 16h |  |
| 51 | 5.2 | **外勤签到** |  | 31d | 2016-10-12 A | 2016-11-23 | 5% | 29.52d | 22d |  |  | 232h | 8h |
| 52 | 5.2.1 | 需求分析 | manual | 1d | 2016-10-12 A | 2016-10-12 A | 100% |  |  |  | 刘静 | 8h | 8h |
| 53 | 5.2.2 | 数据库设计 | manual | 1d | 2016-10-13 | 2016-10-13 |  |  |  |  | 刘静 | 8h |  |
| 54 | 5.2.3 | 移动考勤 |  | 1d | 2016-10-17 | 2016-10-17 |  |  | 33d | finish no earlier than 2016-10-17 | 刘静 | 8h |  |
| 55 | 5.2.4 | 外勤签到 | manual | 2d | 2016-11-09 | 2016-11-10 |  |  |  |  | 李子恒; 刘国 | 32h |  |
| 56 | 5.2.5 | 规则设置 | manual | 1d | 2016-10-18 | 2016-10-18 |  |  |  |  | 刘静 | 8h |  |
| 57 | 5.2.6 | 规则设置 | manual | 2d | 2016-11-11 | 2016-11-14 |  |  |  |  | 李子恒; 刘国 | 32h |  |

Notes:
- 31: 前端页面
- 32: 详情页面功能实现
- 33: 针对团队负责人的详情页面
- 34: 团队详情接口： / 团队成员数据(最多显示18个) / 团队成员总数 / 团队头像 / 团队名称 / 团队ID
- 36: 添加删除成员，两个接口。
- 37: 显示全部成员，参考微信群
- 41: 提供头像上传接口
- 43: 团队名称更新接口
- 45: 外部团队列表和新增接口
- 47: 转让团队接口
- 49: 解散团队接口
- 50: 需要提示用户是否确认解散团队
- 54: 外勤签到接口： / 当前组织机构名称(可切换，团队或组织)/ 服务器返回日期， / 考勤规则， / 上午签到时间，是否已签到 / 下午签退时间，是否已签退 / 签到接口（只能签到1次），签退接口（可多次签退）
- 56: 规则设置接口

| ID | WBS | Task | Type | Duration | Start | Finish | Total slack | Resources | Work |
| --- | --- | --- | --- | --- | --- | --- | --- | --- | --- |
| 58 | 5.2.7 | **考勤记录** |  | 30d | 2016-10-13 | 2016-11-23 | 0d |  | 136h |
| 59 | 5.2.7.1 | 个人考勤 | manual | 1d | 2016-10-19 | 2016-10-19 |  | 刘静 | 8h |
| 60 | 5.2.7.2 | 个人考勤 | manual | 1d | 2016-11-18 | 2016-11-18 |  | 李子恒; 刘国 | 16h |
| 61 | 5.2.7.3 | 记录详情 | manual | 1d | 2016-10-13 | 2016-10-13 |  | 张江锋 | 8h |
| 62 | 5.2.7.4 | 记录详情 | manual | 1d | 2016-10-20 | 2016-10-20 |  | 刘静 | 8h |
| 63 | 5.2.7.5 | **团队考勤** |  | 29d | 2016-10-14 | 2016-11-23 | 0d |  | 96h |
| 64 | 5.2.7.5.1 | 选择团队 | manual | 1d | 2016-10-21 | 2016-10-21 |  | 刘静 | 8h |
| 65 | 5.2.7.5.2 | 选择团队 | manual | 1d | 2016-11-21 | 2016-11-21 |  | 李子恒; 刘国 | 16h |
| 66 | 5.2.7.5.3 | 时间列表 | manual | 1d | 2016-11-22 | 2016-11-22 |  | 李子恒; 刘国 | 16h |
| 67 | 5.2.7.5.4 | 月报列表 | manual | 1d | 2016-10-24 | 2016-10-24 |  | 刘静 | 8h |
| 68 | 5.2.7.5.5 | 月报列表 | manual | 1d | 2016-11-23 | 2016-11-23 |  | 李子恒; 刘国 | 16h |
| 69 | 5.2.7.5.6 | 月报详情 | manual | 1d | 2016-10-14 | 2016-10-14 |  | 张江锋 | 8h |
| 70 | 5.2.7.5.7 | 月报详情 | manual | 1d | 2016-10-25 | 2016-10-25 |  | 刘静 | 8h |
| 71 | 5.2.7.5.8 | 外勤列表 | manual | 1d | 2016-10-14 | 2016-10-14 |  | 张江锋 | 8h |
| 72 | 5.2.7.5.9 | 外勤列表 | manual | 1d | 2016-10-25 | 2016-10-25 |  | 刘静 | 8h |
| 73 | 5.3 | **工作汇报** |  | 40d | 2016-10-12 | 2016-12-06 | 0d |  | 384h |
| 74 | 5.3.1 | 需求分析 | manual | 1d | 2016-10-12 | 2016-10-12 |  | 李海华 | 8h |
| 75 | 5.3.2 | 数据库设计 | manual | 1d | 2016-10-13 | 2016-10-13 |  | 李海华 | 8h |
| 76 | 5.3.3 | **工作汇报** |  | 30d | 2016-10-14 | 2016-11-24 | 0d |  | 32h |
| 77 | 5.3.3.1 | 日报接口 | manual | 1d | 2016-10-14 | 2016-10-14 |  | 李海华 | 8h |
| 78 | 5.3.3.2 | 周报借口 | manual | 1d | 2016-10-17 | 2016-10-17 |  | 李海华 | 8h |
| 79 | 5.3.3.3 | 列表和搜索 | manual | 1d | 2016-11-24 | 2016-11-24 |  | 李子恒; 刘国 | 16h |
| 80 | 5.3.4 | 新建日报 | manual | 1d | 2016-10-18 | 2016-10-18 |  | 李海华 | 8h |
| 81 | 5.3.5 | 新建日报 | manual | 1d | 2016-11-25 | 2016-11-25 |  | 李子恒; 刘国 | 16h |
| 82 | 5.3.6 | 日报详情 | manual | 1d | 2016-10-17 | 2016-10-17 |  | 张江锋 | 8h |
| 83 | 5.3.7 | 日报详情 | manual | 1d | 2016-10-19 | 2016-10-19 |  | 李海华 | 8h |

Notes:
- 64: 接口
- 67: 查询团队下成员的接口
- 80: 接口
- 82: 前端页面

| ID | WBS | Task | Type | Duration | Start | Finish | Total slack | Resources | Work |
| --- | --- | --- | --- | --- | --- | --- | --- | --- | --- |
| 84 | 5.3.8 | **日报记录** |  | 34d | 2016-10-17 | 2016-12-01 | 0d |  | 128h |
| 85 | 5.3.8.1 | 数据接口 | manual | 1d | 2016-10-20 | 2016-10-20 |  | 李海华 | 8h |
| 86 | 5.3.8.2 | 个人记录 | manual | 1d | 2016-11-28 | 2016-11-28 |  | 李子恒; 刘国 | 16h |
| 87 | 5.3.8.3 | 团队记录 | manual | 1d | 2016-11-28 | 2016-11-28 |  | 李子恒; 刘国 | 16h |
| 88 | 5.3.8.4 | 选择团队 | manual | 1d | 2016-11-29 | 2016-11-29 |  | 李子恒; 刘国 | 16h |
| 89 | 5.3.8.5 | 选择日期 | manual | 1d | 2016-11-30 | 2016-11-30 |  | 李子恒; 刘国 | 16h |
| 90 | 5.3.8.6 | 汇报详情 | manual | 1d | 2016-10-17 | 2016-10-17 |  | 张江锋 | 8h |
| 91 | 5.3.8.7 | 汇报详情 | manual | 1d | 2016-10-19 | 2016-10-19 |  | 李海华 | 8h |
| 92 | 5.3.8.8 | 月报列表 | manual | 1d | 2016-10-20 | 2016-10-20 |  | 李海华 | 8h |
| 93 | 5.3.8.9 | 月报列表 | manual | 1d | 2016-12-01 | 2016-12-01 |  | 李子恒; 刘国 | 16h |
| 94 | 5.3.8.10 | 月报详情 | manual | 1d | 2016-10-18 | 2016-10-18 |  | 张江锋 | 8h |
| 95 | 5.3.8.11 | 月报详情 | manual | 1d | 2016-10-21 | 2016-10-21 |  | 李海华 | 8h |
| 96 | 5.3.9 | 新建周报 | manual | 1d | 2016-10-24 | 2016-10-24 |  | 李海华 | 8h |
| 97 | 5.3.10 | 新建周报 | manual | 1d | 2016-12-01 | 2016-12-01 |  | 李子恒; 刘国 | 16h |
| 98 | 5.3.11 | 周报详情 | manual | 1d | 2016-10-18 | 2016-10-18 |  | 张江锋 | 8h |
| 99 | 5.3.12 | 周报详情 | manual | 1d | 2016-10-24 | 2016-10-24 |  | 李海华 | 8h |
| 100 | 5.3.13 | **周报记录** |  | 35d | 2016-10-19 | 2016-12-06 | 0d |  | 128h |
| 101 | 5.3.13.1 | 数据接口 | manual | 1d | 2016-10-25 | 2016-10-25 |  | 李海华 | 8h |
| 102 | 5.3.13.2 | 个人记录 | manual | 1d | 2016-12-02 | 2016-12-02 |  | 李子恒; 刘国 | 16h |
| 103 | 5.3.13.3 | 团队记录 | manual | 1d | 2016-12-02 | 2016-12-02 |  | 李子恒; 刘国 | 16h |
| 104 | 5.3.13.4 | 选择团队 | manual | 1d | 2016-12-05 | 2016-12-05 |  | 李子恒; 刘国 | 16h |
| 105 | 5.3.13.5 | 选择日期 | manual | 1d | 2016-12-05 | 2016-12-05 |  | 李子恒; 刘国 | 16h |
| 106 | 5.3.13.6 | 汇报详情 | manual | 1d | 2016-10-19 | 2016-10-19 |  | 张江锋 | 8h |
| 107 | 5.3.13.7 | 汇报详情 | manual | 1d | 2016-10-26 | 2016-10-26 |  | 李海华 | 8h |
| 108 | 5.3.13.8 | 月报列表 | manual | 1d | 2016-10-26 | 2016-10-26 |  | 李海华 | 8h |
| 109 | 5.3.13.9 | 月报列表 | manual | 1d | 2016-12-06 | 2016-12-06 |  | 李子恒; 刘国 | 16h |
| 110 | 5.3.13.10 | 月报详情 | manual | 1d | 2016-10-19 | 2016-10-19 |  | 张江锋 | 8h |
| 111 | 5.3.13.11 | 月报详情 | manual | 1d | 2016-10-27 | 2016-10-27 |  | 李海华 | 8h |

Notes:
- 92: 接口，团队下的成员列表
- 96: 接口
- 98: 前端页面

| ID | WBS | Task | Type | Duration | Start | Finish | Total slack | Resources | Work |
| --- | --- | --- | --- | --- | --- | --- | --- | --- | --- |
| 112 | 5.4 | **活动汇报** |  | 41d | 2016-10-14 | 2016-12-09 | 0d |  | 168h |
| 113 | 5.4.1 | 需求分析 | manual | 1d | 2016-10-14 | 2016-10-14 |  | 陈果 | 8h |
| 114 | 5.4.2 | 数据库设计 | manual | 1d | 2016-10-17 | 2016-10-17 |  | 陈果 | 8h |
| 115 | 5.4.3 | 新建汇报 | manual | 1d | 2016-10-18 | 2016-10-18 |  | 陈果 | 8h |
| 116 | 5.4.4 | 新建汇报 | manual | 1d | 2016-12-07 | 2016-12-07 |  | 李子恒; 刘国 | 16h |
| 117 | 5.4.5 | 汇报详情 | manual | 1d | 2016-10-20 | 2016-10-20 |  | 张江锋 | 8h |
| 118 | 5.4.6 | 汇报详情 | manual | 1d | 2016-10-18 | 2016-10-18 |  | 陈果 | 8h |
| 119 | 5.4.7 | **汇报记录** |  | 38d | 2016-10-19 | 2016-12-09 | 0d |  | 112h |
| 120 | 5.4.7.1 | 数据接口 | manual | 1d | 2016-10-19 | 2016-10-19 |  | 陈果 | 8h |
| 121 | 5.4.7.2 | 个人记录 | manual | 1d | 2016-12-07 | 2016-12-07 |  | 李子恒; 刘国 | 16h |
| 122 | 5.4.7.3 | 团队记录 | manual | 1d | 2016-12-07 | 2016-12-07 |  | 李子恒; 刘国 | 16h |
| 123 | 5.4.7.4 | 选择团队 | manual | 1d | 2016-12-08 | 2016-12-08 |  | 李子恒; 刘国 | 16h |
| 124 | 5.4.7.5 | 选择日期 | manual | 1d | 2016-12-08 | 2016-12-08 |  | 李子恒; 刘国 | 16h |
| 125 | 5.4.7.6 | 汇报详情 | manual | 1d | 2016-10-20 | 2016-10-20 |  | 陈果 | 8h |
| 126 | 5.4.7.7 | 月报列表 | manual | 1d | 2016-10-20 | 2016-10-20 |  | 陈果 | 8h |
| 127 | 5.4.7.8 | 月报列表 | manual | 1d | 2016-12-09 | 2016-12-09 |  | 李子恒; 刘国 | 16h |
| 128 | 5.4.7.9 | 月报详情 | manual | 1d | 2016-10-21 | 2016-10-21 |  | 陈果 | 8h |
| 129 | 5.5 | **知识库** |  | 44d | 2016-10-12 | 2016-12-12 | 0d |  | 64h |
| 130 | 5.5.1 | 需求分析 | manual | 1d | 2016-10-12 | 2016-10-12 |  | 黄根 | 8h |
| 131 | 5.5.2 | 数据库设计 | manual | 1d | 2016-10-13 | 2016-10-13 |  | 黄根 | 8h |
| 132 | 5.5.3 | 数据接口 | manual | 2d | 2016-10-18 | 2016-10-19 |  | 文伟 | 16h |
| 133 | 5.5.4 | 知识库 | manual | 1d | 2016-12-12 | 2016-12-12 |  | 李子恒; 刘国 | 16h |
| 134 | 5.5.5 | 文件列表 | manual | 1d | 2016-12-12 | 2016-12-12 |  | 李子恒; 刘国 | 16h |
| 135 | 5.6 | **内网视频** |  | 45d | 2016-10-12 | 2016-12-13 | 0d |  | 64h |
| 136 | 5.6.1 | 需求分析 | manual | 1d | 2016-10-12 | 2016-10-12 |  | 文伟 | 8h |
| 137 | 5.6.2 | 数据库设计 | manual | 1d | 2016-10-13 | 2016-10-13 |  | 文伟 | 8h |
| 138 | 5.6.3 | 数据接口 | manual | 2d | 2016-10-20 | 2016-10-21 |  | 文伟 | 16h |
| 139 | 5.6.4 | 内网视频 | manual | 1d | 2016-12-13 | 2016-12-13 |  | 李子恒; 刘国 | 16h |
| 140 | 5.6.5 | 视频详情 | manual | 1d | 2016-10-20 | 2016-10-20 |  | 张江锋 | 8h |
| 141 | 5.6.6 | 视频详情 | manual | 1d | 2016-10-21 | 2016-10-21 |  | 文伟 | 8h |

Notes:
- 115: 接口
- 117: 前端页面
- 125: 页面使用工作日报的页面样式
- 126: 接口
- 128: 页面使用工作日报的页面样式
- 132: 数据接口： / 1、知识库接口： 获取每个分类的最新一个文件，最近浏览记录 / 2、文件列表接口
- 138: 数据接口： / 1、视频列表接口

| ID | WBS | Task | Type | Duration | Start | Finish | Total slack | Resources | Work |
| --- | --- | --- | --- | --- | --- | --- | --- | --- | --- |
| 142 | 6 | **通讯录** |  | 41d | 2016-10-21 | 2016-12-16 | 0d |  | 192h |
| 143 | 6.1 | 需求分析 | manual | 1d | 2016-10-24 | 2016-10-24 |  | 陈果 | 8h |
| 144 | 6.2 | 数据接口 | manual | 1d | 2016-10-25 | 2016-10-25 |  | 陈果 | 8h |
| 145 | 6.3 | 通讯录页面 | manual | 1d | 2016-12-14 | 2016-12-14 |  | 李子恒; 刘国 | 16h |
| 146 | 6.4 | 组织架构页面 | manual | 1d | 2016-12-14 | 2016-12-14 |  | 李子恒; 刘国 | 16h |
| 147 | 6.5 | 部门详情 | manual | 1d | 2016-10-21 | 2016-10-21 |  | 张江锋 | 8h |
| 148 | 6.6 | 部门详情 | manual | 1d | 2016-10-26 | 2016-10-26 |  | 陈果 | 8h |
| 149 | 6.7 | 考勤规则 | manual | 1d | 2016-10-21 | 2016-10-21 |  | 张江锋 | 8h |
| 150 | 6.8 | 考勤规则 | manual | 1d | 2016-10-27 | 2016-10-27 |  | 陈果; 刘静 | 16h |
| 151 | 6.9 | 考勤规则编辑 | manual | 1d | 2016-12-14 | 2016-12-14 |  | 陈果; 李子恒; 刘国; 刘静 | 32h |
| 152 | 6.10 | 编辑部门 | manual | 1d | 2016-10-28 | 2016-10-28 |  | 陈果 | 8h |
| 153 | 6.11 | 编辑部门 | manual | 1d | 2016-12-15 | 2016-12-15 |  | 李子恒; 刘国 | 16h |
| 154 | 6.12 | 员工详情 | manual | 1d | 2016-10-31 | 2016-10-31 |  | 陈果 | 8h |
| 155 | 6.13 | 员工详情 | manual | 1d | 2016-12-16 | 2016-12-16 |  | 李子恒; 刘国 | 16h |
| 156 | 6.14 | 资料修改 | manual | 1d | 2016-10-31 | 2016-10-31 |  | 陈果 | 8h |
| 157 | 6.15 | 资料修改 | manual | 1d | 2016-12-16 | 2016-12-16 |  | 李子恒; 刘国 | 16h |
| 158 | 7 | **我的** |  | 4d? | 2016-12-19 | 2016-12-22 | 0d |  | 128h |
| 159 | 7.1 | 数据接口 | manual | 1d? | 2016-12-19 | 2016-12-19 |  |  |  |
| 160 | 7.2 | “我”页面 | manual | 1d | 2016-12-19 | 2016-12-19 |  | 李子恒; 刘国 | 16h |
| 161 | 7.3 | 我的资料 | manual | 1d | 2016-12-19 | 2016-12-19 |  | 李子恒; 刘国 | 16h |
| 162 | 7.4 | 切换团队 | manual | 1d | 2016-12-20 | 2016-12-20 |  | 李子恒; 刘国 | 16h |
| 163 | 7.5 | 意见反馈 | manual | 1d | 2016-12-20 | 2016-12-20 |  | 李子恒; 刘国 | 16h |
| 164 | 7.6 | 邀请同事 | manual | 1d | 2016-12-21 | 2016-12-21 |  | 李子恒; 刘国 | 16h |
| 165 | 7.7 | 设置页面 | manual | 1d | 2016-12-22 | 2016-12-22 |  | 李子恒; 刘国 | 16h |
| 166 | 7.8 | 更换手机号 | manual | 1d | 2016-12-22 | 2016-12-22 |  | 李子恒; 刘国 | 16h |
| 167 | 7.9 | 修改登录密码 | manual | 1d | 2016-12-22 | 2016-12-22 |  | 李子恒; 刘国 | 16h |

Notes:
- 144: 1、通讯录接口：本部门或下级部门成员 / 2、组织架构接口：获取本部门及下级部门 包含团队
- 147: 前端页面
- 149: 前端页面
- 151: 这个功能在移动考勤里面应该就已经完成了
- 152: 接口
- 153: 开发的时候与胡世添
- 154: 接口
- 156: 接口
- 159: 1、用户接口：当前登录用户姓名，头像，工号、手机号、职务、性别、所在组织 团队 / 2、退出登录接口 / 3、切换团队接口 / 4、邀请接口 / 5、意见反馈接口 / 6、更换手机号接口（注意登录名） / 7、修改登录密码接口

| ID | WBS | Task | Type | Duration | Start | Finish | Total slack | Resources | Work |
| --- | --- | --- | --- | --- | --- | --- | --- | --- | --- |
| 168 | 8 | **首次登陆** |  | 1d? | 2016-12-23 | 2016-12-23 | 0d |  | 48h |
| 169 | 8.1 | 数据接口 | manual | 1d? | 2016-12-23 | 2016-12-23 |  |  |  |
| 170 | 8.2 | 验证身份 | manual | 1d | 2016-12-23 | 2016-12-23 |  | 李子恒; 刘国 | 16h |
| 171 | 8.3 | 绑定设备 | manual | 1d | 2016-12-23 | 2016-12-23 |  | 李子恒; 刘国 | 16h |
| 172 | 8.4 | 设置密码 | manual | 1d | 2016-12-23 | 2016-12-23 |  | 李子恒; 刘国 | 16h |
| 173 | 9 | **消息** |  | 1d? | 2016-10-10 | 2016-10-10 | 0d |  | 112h |
| 174 | 9.1 | 数据接口 | manual | 1d? | 2016-10-10 | 2016-10-10 |  |  |  |
| 175 | 9.2 | 聊天列表 | manual | 1d? | 2016-10-10 | 2016-10-10 |  | 李子恒; 刘国 | 16h |
| 176 | 9.3 | 聊天界面 | manual | 1d? | 2016-10-10 | 2016-10-10 |  | 李子恒; 刘国 | 16h |
| 177 | 9.4 | 发起群聊 | manual | 1d? | 2016-10-10 | 2016-10-10 |  | 李子恒; 刘国 | 16h |
| 178 | 9.5 | **小组信息** |  | 1d? | 2016-10-10 | 2016-10-10 | 0d |  | 64h |
| 179 | 9.5.1 | 数据接口 | manual | 1d? | 2016-10-10 | 2016-10-10 |  |  |  |
| 180 | 9.5.2 | 全部成员 | manual | 1d? | 2016-10-10 | 2016-10-10 |  | 李子恒; 刘国 | 16h |
| 181 | 9.5.3 | 小组头像 | manual | 1d? | 2016-10-10 | 2016-10-10 |  | 李子恒; 刘国 | 16h |
| 182 | 9.5.4 | 小组名称 | manual | 1d? | 2016-10-10 | 2016-10-10 |  | 李子恒; 刘国 | 16h |
| 183 | 9.5.5 | 转让该小组 | manual | 1d? | 2016-10-10 | 2016-10-10 |  | 李子恒; 刘国 | 16h |
| 184 | 10 | 搜索 | manual | 1d? | 2016-10-10 | 2016-10-10 |  | 李子恒; 刘国 | 16h |
| 185 | 11 | 扫一扫 | manual | 1d? | 2016-10-10 | 2016-10-10 |  | 李子恒; 刘国 | 16h |

Notes:
- 174: 1、聊天列表接口 / 2、发起群聊接口
- 179: 1、小组信息接口 / 2、全部成员接口 / 3、小组头像修改接口 / 4、小组名称修改接口 / 5、转让组接口 / 6、解散组接口
